# vms_project

How a schedule from MS Project changed from version to version. A marks actual dates.

## Version 1 (saved 2012-09-08)

| ID | WBS | Task | Duration | Start | Finish | Predecessors | Total float | Constraint |
| --- | --- | --- | --- | --- | --- | --- | --- | --- |
| 1 | 1 | **Khảo sát** | 147.38d | 2012-02-28 | 2012-07-25 |  | 109.82d |  |
| 2 |  | Khảo sát lần 1 | 0d | 2012-02-28 | 2012-02-28 |  | 263.87d | start no earlier than 2012-02-28 |
| 3 |  | Khảo sát lần 2 | 0d | 2012-03-12 | 2012-03-12 |  | 250.92d | start no earlier than 2012-03-12 |
| 4 |  | Khảo sát lần 3 | 0d | 2012-07-12 | 2012-07-12 |  | 129.43d | start no earlier than 2012-07-12 |
| 5 |  | Khảo sát lần 4 | 0d | 2012-07-25 | 2012-07-25 |  | 116.48d | start no earlier than 2012-07-25 |
| 6 |  | Phân tích yêu cầu | 0d | 2012-07-30 | 2012-07-30 |  | 111.5d | start no earlier than 2012-07-30 |
| 7 |  | Viết tài liệu mô tả yêu cầu | 0d | 2012-07-30 | 2012-07-30 |  | 111.5d | start no earlier than 2012-07-30 |
| 8 |  | Thiết kế giao diện | 0d | 2012-07-25 | 2012-07-25 |  | 116.48d | start no earlier than 2012-07-25 |
| 9 |  | Thiết kế use case | 0d | 2012-08-03 | 2012-08-03 |  | 107.52d | start no earlier than 2012-08-03 |
| 10 |  | Thiết kế database | 0d | 2012-08-03 | 2012-08-03 | 9 | 100.85d |  |
| 11 |  | Lên kế hoạch công việc | 0d | 2012-09-07 | 2012-09-07 |  | 72.67d |  |
| 12 | 8 | **Training** | 0d | 2012-09-07 | 2012-09-07 |  | 66d |  |
| 13 |  | Training nghiệp vụ | 0d | 2012-09-07 | 2012-09-07 |  | 72.67d |  |
| 14 |  | Training framework | 0d | 2012-09-07 | 2012-09-07 |  | 72.67d |  |
| 15 | 9 | **Code** | 74d | 2012-09-07 | 2012-11-20 |  | 0d |  |
| 16 | 9.1 | **Giai đoạn 1** | 35d | 2012-09-07 | 2012-10-12 |  | 0d |  |
| 17 |  | Tạo giao diện chính | 0d | 2012-09-07 | 2012-09-07 |  | 72.67d |  |
| 18 |  | Quản lý người dùng | 0d | 2012-09-07 | 2012-09-07 |  | 72.67d |  |
| 19 |  | Phân quyền người dùng | 0d | 2012-09-07 | 2012-09-07 |  | 72.67d |  |
| 20 | 9.1.4 | **Quản lý danh mục** | 8d | 2012-09-07 | 2012-09-15 |  | 2d |  |
| 21 |  | Danh mục phòng ban | 1d | 2012-09-07 | 2012-09-08 |  | 2d | start no earlier than 2012-09-07 |
| 22 |  | Danh mục loại giao tiếp | 1d | 2012-09-08 | 2012-09-09 | 21 | 2d |  |
| 23 |  | Danh mục cách tính cước | 1d | 2012-09-09 | 2012-09-10 | 22 | 2d |  |
| 24 |  | Danh mục đối tác | 1d | 2012-09-10 | 2012-09-11 | 23 | 2d |  |
| 25 |  | Danh mục tiêu chuẩn bàn giao kênh | 1d | 2012-09-11 | 2012-09-12 | 24 | 2d |  |
| 26 |  | Danh mục dự án | 1d | 2012-09-12 | 2012-09-13 | 25 | 2d |  |
| 27 |  | Danh mục khu vực | 1d | 2012-09-13 | 2012-09-14 | 26 | 2d |  |
| 28 |  | Viết tài liệu mô tả, chú ý những chỗ đặc biệt | 1d | 2012-09-14 | 2012-09-15 | 27 | 2d |  |
| 29 | 9.1.5 | **Quản lý tuyến kênh** | 22d | 2012-09-07 | 2012-09-29 |  | 0d |  |
| 30 |  | Tìm kiếm | 3d | 2012-09-07 | 2012-09-10 |  | 0d |  |
| 31 |  | Thêm | 3d | 2012-09-10 | 2012-09-13 | 30 | 0d |  |
| 32 |  | Xóa | 1d | 2012-09-13 | 2012-09-14 | 31 | 0d |  |
| 33 |  | Sửa | 2d | 2012-09-14 | 2012-09-16 | 32 | 0d |  |
| 34 |  | Xem chi tiết | 2d | 2012-09-16 | 2012-09-18 | 33 | 0d |  |
| 35 |  | Import | 5d | 2012-09-18 | 2012-09-23 | 34 | 0d |  |
| 36 |  | Export | 2d | 2012-09-23 | 2012-09-25 | 35 | 0d |  |
| 37 |  | Form tìm kiếm tuyến kênh sử dụng chung | 3d | 2012-09-25 | 2012-09-28 | 36 | 0d |  |
| 38 |  | Viết tài liệu mô tả, chú ý những chỗ đặc biệt | 1d | 2012-09-28 | 2012-09-29 | 37 | 0d |  |
| 39 | 9.1.6 | **Quản lý tiến độ bàn giao kênh** | 6d | 2012-09-29 | 2012-10-05 |  | 0d |  |
| 40 |  | Tìm kiếm | 3d | 2012-09-29 | 2012-10-02 | 38 | 0d | start no earlier than 2012-08-07 |
| 41 |  | Cập nhật tiến độ bàn giao kênh | 2d | 2012-10-02 | 2012-10-04 | 40 | 0d |  |
| 42 |  | Viết tài liệu mô tả, chú ý những chỗ đặc biệt | 1d | 2012-10-04 | 2012-10-05 | 41 | 0d |  |
| 43 | 9.1.7 | **Quản lý sự cố** | 12d | 2012-09-07 | 2012-09-19 |  | 11d |  |
| 44 |  | Tìm kiếm | 1d | 2012-09-07 | 2012-09-08 |  | 11d |  |
| 45 |  | Thêm | 1d | 2012-09-08 | 2012-09-09 | 44 | 11d |  |
| 46 |  | Xóa | 1d | 2012-09-09 | 2012-09-10 | 45 | 11d |  |
| 47 |  | Sửa | 1d | 2012-09-10 | 2012-09-11 | 46 | 11d |  |
| 48 |  | Import | 3d | 2012-09-11 | 2012-09-14 | 47 | 11d |  |
| 49 |  | Export | 1d | 2012-09-14 | 2012-09-15 | 48 | 11d |  |
| 50 |  | Xem chi tiết | 1d | 2012-09-15 | 2012-09-16 | 49 | 11d |  |
| 51 |  | Màn hình tìm kiếm sự cố dùng chung | 2d | 2012-09-16 | 2012-09-18 | 50 | 11d |  |
| 52 |  | Viết tài liệu mô tả, chú ý những chỗ đặc biệt | 1d | 2012-09-18 | 2012-09-19 | 51 | 11d |  |
| 53 | 9.1.8 | **Quản lý văn bản đề xuất** | 9d | 2012-09-15 | 2012-09-24 |  | 2d |  |
| 54 |  | Tìm kiếm | 1d | 2012-09-15 | 2012-09-16 | 28 | 2d |  |
| 55 |  | Thêm | 3d | 2012-09-16 | 2012-09-19 | 54 | 2d |  |
| 56 |  | Xóa | 1d | 2012-09-19 | 2012-09-20 | 55 | 2d |  |
| 57 |  | Sửa | 2d | 2012-09-20 | 2012-09-22 | 56 | 2d |  |
| 58 |  | Xem chi tiết | 1d | 2012-09-22 | 2012-09-23 | 57 | 2d |  |
| 59 |  | Viết tài liệu mô tả, chú ý những chỗ đặc biệt | 1d | 2012-09-23 | 2012-09-24 | 58 | 2d |  |
| 60 | 9.1.9 | **Quản lý biên bản bàn giao kênh** | 9d | 2012-09-24 | 2012-10-03 |  | 2d |  |
| 61 |  | Tìm kiếm | 1d | 2012-09-24 | 2012-09-25 | 59 | 2d |  |
| 62 |  | Thêm | 3d | 2012-09-25 | 2012-09-28 | 61 | 2d |  |
| 63 |  | Xóa | 1d | 2012-09-28 | 2012-09-29 | 62 | 2d |  |
| 64 |  | Sửa | 2d | 2012-09-29 | 2012-10-01 | 63 | 2d |  |
| 65 |  | Xem chi tiết | 1d | 2012-10-01 | 2012-10-02 | 64 | 2d |  |
| 66 |  | Viết tài liệu mô tả, chú ý những chỗ đặc biệt | 1d | 2012-10-02 | 2012-10-03 | 65 | 2d |  |
| 67 | 9.1.10 | **Quản lý biên bản vận hành kênh** | 5d | 2012-09-19 | 2012-09-24 |  | 11d |  |
| 68 |  | Tìm kiếm | 1d | 2012-09-19 | 2012-09-20 | 52 | 11d |  |
| 69 |  | Thêm | 1d | 2012-09-20 | 2012-09-21 | 68 | 11d |  |
| 70 |  | Xóa | 1d | 2012-09-21 | 2012-09-22 | 69 | 11d |  |

| ID | WBS | Task | Duration | Start | Finish | Predecessors | Total float | Constraint |
| --- | --- | --- | --- | --- | --- | --- | --- | --- |
| 71 |  | Sửa | 1d | 2012-09-22 | 2012-09-23 | 70 | 11d |  |
| 72 |  | Viết tài liệu mô tả, chú ý những chỗ đặc biệt | 1d | 2012-09-23 | 2012-09-24 | 71 | 11d |  |
| 73 |  | Test và fix bug giai đoạn 1 | 5d | 2012-10-05 | 2012-10-10 | 72, 66, 42 | 0d |  |
| 74 |  | Build giai đoạn 1 | 1d | 2012-10-10 | 2012-10-11 | 73 | 0d |  |
| 75 |  | Demo giai đoạn 1 | 1d | 2012-10-11 | 2012-10-12 | 74 | 0d |  |
| 76 | 9.2 | **Giai đoạn 2** | 49d | 2012-09-24 | 2012-11-12 |  | 0d |  |
| 77 | 9.2.1 | **Quản lý hợp đồng** | 6d | 2012-09-24 | 2012-09-30 |  | 19d |  |
| 78 |  | Tìm kiếm | 1d | 2012-09-24 | 2012-09-25 | 72 | 19d |  |
| 79 |  | Thêm | 1d | 2012-09-25 | 2012-09-26 | 78 | 19d |  |
| 80 |  | Xóa | 1d | 2012-09-26 | 2012-09-27 | 79 | 19d |  |
| 81 |  | Sửa | 1d | 2012-09-27 | 2012-09-28 | 80 | 19d |  |
| 82 |  | Xem chi tiết | 1d | 2012-09-28 | 2012-09-29 | 81 | 19d |  |
| 83 |  | Viết tài liệu mô tả, chú ý những chỗ đặc biệt | 1d | 2012-09-29 | 2012-09-30 | 82 | 19d |  |
| 84 | 9.2.2 | **Quản lý phụ lục hợp đồng** | 16.98d | 2012-10-03 | 2012-10-20 |  | 2.02d |  |
| 85 |  | Tính giá trị phụ lục | 4d | 2012-10-03 | 2012-10-12 | 66 | 2.02d |  |
| 86 |  | Thêm | 3d | 2012-10-12 | 2012-10-15 | 85 | 2.02d |  |
| 87 |  | Xóa | 1d | 2012-10-15 | 2012-10-16 | 86 | 2.02d |  |
| 88 |  | Sửa | 2d | 2012-10-16 | 2012-10-18 | 87 | 2.02d |  |
| 89 |  | Tìm kiếm | 1d | 2012-10-18 | 2012-10-19 | 88 | 2.02d |  |
| 90 |  | Viết tài liệu mô tả, chú ý những chỗ đặc biệt | 1d | 2012-10-19 | 2012-10-20 | 89 | 2.02d |  |
| 91 | 9.2.3 | **Quản lý hồ sơ thanh toán** | 18d | 2012-09-30 | 2012-10-18 |  | 7d |  |
| 92 |  | Kê khai hồ sơ thanh toán | 3d | 2012-09-30 | 2012-10-03 | 83 | 19d |  |
| 93 |  | Tìm kiếm | 1d | 2012-10-03 | 2012-10-04 | 92 | 19d |  |
| 94 |  | Xóa | 1d | 2012-10-04 | 2012-10-05 | 93 | 19d | start no earlier than 2012-10-04 |
| 95 |  | Sửa | 1d | 2012-10-12 | 2012-10-13 | 94, 75 | 12d |  |
| 96 |  | Link với web thanh toán | 5d | 2012-10-12 | 2012-10-17 | 75 | 0d |  |
| 97 |  | Viết tài liệu mô tả, chú ý những chỗ đặc biệt | 1d | 2012-10-17 | 2012-10-18 | 96 | 0d |  |
| 98 | 9.2.4 | **Báo cáo** | 24d | 2012-10-13 | 2012-11-06 |  | 0d |  |
| 99 | 9.2.4.1 | **Báo cáo tiến độ** | 7d | 2012-10-18 | 2012-10-25 |  | 0d |  |
| 100 |  | Store database | 6d | 2012-10-18 | 2012-10-24 | 97 | 0d |  |
| 101 |  | Giao diện | 2d | 2012-10-20 | 2012-10-22 | 90 | 2.02d |  |
| 102 |  | Viết tài liệu mô tả, chú ý những chỗ đặc biệt | 1d | 2012-10-24 | 2012-10-25 | 101, 100 | 0d |  |
| 103 | 9.2.4.2 | **Xuất bảng đối soát cước** | 16d | 2012-10-13 | 2012-10-29 |  | 0d |  |
| 104 |  | Store database | 3d | 2012-10-25 | 2012-10-28 | 102 | 0d |  |
| 105 |  | Giao diện | 3d | 2012-10-13 | 2012-10-16 | 95 | 12d |  |
| 106 |  | Viết tài liệu mô tả, chú ý những chỗ đặc biệt | 1d | 2012-10-28 | 2012-10-29 | 104, 105 | 0d |  |
| 107 | 9.2.4.3 | **Báo cáo giảm trừ mất liên lạc** | 11.02d | 2012-10-22 | 2012-11-02 |  | 0d |  |
| 108 |  | Store databse | 3d | 2012-10-29 | 2012-11-01 | 106 | 0d |  |
| 109 |  | Giao diện | 2d | 2012-10-22 | 2012-10-24 | 101 | -3.02d |  |
| 110 |  | Viết tài liệu mô tả, chú ý những chỗ đặc biệt | 1d | 2012-11-01 | 2012-11-02 | 108, 109 | 0d |  |
| 111 | 9.2.4.4 | **Báo cáo sự cố theo thời gian** | 13.02d | 2012-10-24 | 2012-11-06 |  | 0d |  |
| 112 |  | Store databse | 3d | 2012-11-02 | 2012-11-05 | 110 | 0d |  |
| 113 |  | Giao diện | 2d | 2012-10-24 | 2012-11-02 | 109 | -3.02d |  |
| 114 |  | Viết tài liệu mô tả, chú ý những chỗ đặc biệt | 1d | 2012-11-05 | 2012-11-06 | 113, 112 | 0d |  |
| 115 |  | Test và fix bug giai đoạn 2 | 5d | 2012-11-06 | 2012-11-11 | 114, 105 | 0d |  |
| 116 |  | Demo giai đoạn 2 | 1d | 2012-11-11 | 2012-11-12 | 115 | 0d |  |
| 117 |  | Test và fix bug cả hai giai đoạn trong lúc chờ ý kiến phản hồi của khách hàng | 5d | 2012-11-12 | 2012-11-17 | 116, 75 | 0d |  |
| 118 |  | Viết tài liệu hướng dẫn sử dụng | 3d | 2012-11-17 | 2012-11-20 | 117 | 0d | start no earlier than 2012-10-12 |

## Version 2 (saved 2012-09-10)

Last finish 2012-11-20 → 2012-11-07 (-13d).

Changed:

| ID | Task | Start | Finish | Duration | Total float | Predecessors |
| --- | --- | --- | --- | --- | --- | --- |
| 15 | **Code** |  | 2012-11-20 → 2012-11-07 (-13d) | 74d → 61.5d |  |  |
| 16 | **Giai đoạn 1** |  | 2012-10-12 → 2012-10-03 (-9d) | 35d → 26.5d |  |  |
| 20 | **Quản lý danh mục** |  | 2012-09-15 → 2012-09-10 (-5d) | 8d → 3.5d | 2d → 0d |  |
| 24 | Danh mục đối tác |  | 2012-09-11 → 2012-09-10 (-1d) | 1d → 0d | 2d → 0d |  |
| 25 | Danh mục tiêu chuẩn bàn giao kênh | 2012-09-11 → 2012-09-10 (-1d) | 2012-09-12 → 2012-09-10 (-2d) | 1d → 0d | 2d → 0d |  |
| 26 | Danh mục dự án | 2012-09-12 → 2012-09-10 (-2d) | 2012-09-13 → 2012-09-10 (-3d) | 1d → 0d | 2d → 0d |  |
| 27 | Danh mục khu vực | 2012-09-13 → 2012-09-10 (-3d) | 2012-09-14 → 2012-09-10 (-4d) | 1d → 0d | 2d → 0d |  |
| 28 | Viết tài liệu mô tả, chú ý những chỗ đặc biệt | 2012-09-14 → 2012-09-10 (-4d) | 2012-09-15 → 2012-09-10 (-5d) | 1d → 0.5d | 2d → 0d |  |
| 29 | **Quản lý tuyến kênh** |  | 2012-09-29 → 2012-09-25 (-4d) | 22d → 18.5d | 0d → 1d |  |
| 30 | Tìm kiếm |  | 2012-09-10 → 2012-09-09 (-1d) | 3d → 2d | 0d → 1d |  |
| 31 | Thêm | 2012-09-10 → 2012-09-09 (-1d) | 2012-09-13 → 2012-09-12 (-1d) |  | 0d → 1d |  |
| 32 | Xóa | 2012-09-13 → 2012-09-12 (-1d) | 2012-09-14 → 2012-09-13 (-1d) |  | 0d → 1d |  |
| 33 | Sửa | 2012-09-14 → 2012-09-13 (-1d) | 2012-09-16 → 2012-09-15 (-1d) |  | 0d → 1d |  |
| 34 | Xem chi tiết | 2012-09-16 → 2012-09-15 (-1d) | 2012-09-18 → 2012-09-17 (-1d) |  | 0d → 1d |  |
| 35 | Import | 2012-09-18 → 2012-09-17 (-1d) | 2012-09-23 → 2012-09-21 (-2d) | 5d → 4d | 0d → 1d |  |
| 36 | Export | 2012-09-23 → 2012-09-21 (-2d) | 2012-09-25 → 2012-09-23 (-2d) |  | 0d → 1d |  |
| 37 | Form tìm kiếm tuyến kênh sử dụng chung | 2012-09-25 → 2012-09-23 (-2d) | 2012-09-28 → 2012-09-25 (-3d) | 3d → 2d | 0d → 1d |  |
| 38 | Viết tài liệu mô tả, chú ý những chỗ đặc biệt | 2012-09-28 → 2012-09-25 (-3d) | 2012-09-29 → 2012-09-25 (-4d) | 1d → 0.5d | 0d → 1d |  |
| 39 | **Quản lý tiến độ bàn giao kênh** | 2012-09-29 → 2012-09-25 (-4d) | 2012-10-05 → 2012-09-29 (-6d) | 6d → 4d | 0d → 1d |  |
| 40 | Tìm kiếm | 2012-09-29 → 2012-09-25 (-4d) | 2012-10-02 → 2012-09-27 (-5d) | 3d → 2d | 0d → 1d |  |
| 41 | Cập nhật tiến độ bàn giao kênh | 2012-10-02 → 2012-09-27 (-5d) | 2012-10-04 → 2012-09-29 (-5d) | 2d → 1.5d | 0d → 1d |  |
| 42 | Viết tài liệu mô tả, chú ý những chỗ đặc biệt | 2012-10-04 → 2012-09-29 (-5d) | 2012-10-05 → 2012-09-29 (-6d) | 1d → 0.5d | 0d → 1d |  |
| 49 | Export |  |  | 1d → 1.5d | 11d → 6d |  |
| 52 | Viết tài liệu mô tả, chú ý những chỗ đặc biệt |  |  | 1d → 0.5d | 11d → 6d |  |
| 53 | **Quản lý văn bản đề xuất** | 2012-09-15 → 2012-09-10 (-5d) | 2012-09-24 → 2012-09-18 (-6d) | 9d → 7.5d | 2d → 0d |  |
| 54 | Tìm kiếm | 2012-09-15 → 2012-09-10 (-5d) | 2012-09-16 → 2012-09-11 (-5d) |  | 2d → 0d |  |
| 55 | Thêm | 2012-09-16 → 2012-09-11 (-5d) | 2012-09-19 → 2012-09-13 (-6d) | 3d → 2d | 2d → 0d |  |
| 56 | Xóa | 2012-09-19 → 2012-09-13 (-6d) | 2012-09-20 → 2012-09-14 (-6d) |  | 2d → 0d |  |
| 57 | Sửa | 2012-09-20 → 2012-09-14 (-6d) | 2012-09-22 → 2012-09-16 (-6d) |  | 2d → 0d |  |
| 58 | Xem chi tiết | 2012-09-22 → 2012-09-16 (-6d) | 2012-09-23 → 2012-09-17 (-6d) |  | 2d → 0d |  |
| 59 | Viết tài liệu mô tả, chú ý những chỗ đặc biệt | 2012-09-23 → 2012-09-17 (-6d) | 2012-09-24 → 2012-09-18 (-6d) | 1d → 0.5d | 2d → 0d |  |
| 60 | **Quản lý biên bản bàn giao kênh** | 2012-09-24 → 2012-09-18 (-6d) | 2012-10-03 → 2012-09-25 (-8d) | 9d → 7.5d | 2d → 0d |  |
| 61 | Tìm kiếm | 2012-09-24 → 2012-09-18 (-6d) | 2012-09-25 → 2012-09-19 (-6d) |  | 2d → 0d |  |
| 62 | Thêm | 2012-09-25 → 2012-09-19 (-6d) | 2012-09-28 → 2012-09-21 (-7d) | 3d → 2d | 2d → 0d |  |
| 63 | Xóa | 2012-09-28 → 2012-09-21 (-7d) | 2012-09-29 → 2012-09-22 (-7d) |  | 2d → 0d |  |
| 64 | Sửa | 2012-09-29 → 2012-09-22 (-7d) | 2012-10-01 → 2012-09-24 (-7d) |  | 2d → 0d |  |
| 65 | Xem chi tiết | 2012-10-01 → 2012-09-24 (-7d) | 2012-10-02 → 2012-09-25 (-7d) |  | 2d → 0d |  |
| 66 | Viết tài liệu mô tả, chú ý những chỗ đặc biệt | 2012-10-02 → 2012-09-25 (-7d) | 2012-10-03 → 2012-09-25 (-8d) | 1d → 0.5d | 2d → 0d |  |
| 67 | **Quản lý biên bản vận hành kênh** |  | 2012-09-24 → 2012-09-23 (-1d) | 5d → 4.5d | 11d → 0.5d |  |
| 72 | Viết tài liệu mô tả, chú ý những chỗ đặc biệt |  | 2012-09-24 → 2012-09-23 (-1d) | 1d → 0.5d | 11d → 0.5d |  |
| 73 | Test và fix bug giai đoạn 1 | 2012-10-05 → 2012-09-30 (-5d) | 2012-10-10 → 2012-10-01 (-9d) | 5d → 1d |  | 72, 66, 42 → 42, 83, 85 |
| 74 | Build giai đoạn 1 | 2012-10-10 → 2012-10-01 (-9d) | 2012-10-11 → 2012-10-02 (-9d) |  |  |  |
| 75 | Demo giai đoạn 1 | 2012-10-11 → 2012-10-02 (-9d) | 2012-10-12 → 2012-10-03 (-9d) |  |  |  |
| 76 | **Giai đoạn 2** | 2012-09-24 → 2012-09-23 (-1d) | 2012-11-12 → 2012-10-30 (-13d) | 49d → 37d |  |  |
| 77 | **Quản lý hợp đồng** | 2012-09-24 → 2012-09-23 (-1d) | 2012-09-30 → 2012-09-29 (-1d) | 6d → 5.5d | 19d → 0.5d |  |
| 78 | Tìm kiếm | 2012-09-24 → 2012-09-23 (-1d) | 2012-09-25 → 2012-09-24 (-1d) |  | 19d → 0.5d |  |
| 79 | Thêm | 2012-09-25 → 2012-09-24 (-1d) | 2012-09-26 → 2012-09-25 (-1d) |  | 19d → 9.5d |  |
| 80 | Xóa | 2012-09-26 → 2012-09-25 (-1d) | 2012-09-27 → 2012-09-26 (-1d) |  | 19d → 9.5d |  |
| 81 | Sửa | 2012-09-27 → 2012-09-26 (-1d) | 2012-09-28 → 2012-09-27 (-1d) |  | 19d → 9.5d |  |
| 82 | Xem chi tiết | 2012-09-28 → 2012-09-27 (-1d) | 2012-09-29 → 2012-09-28 (-1d) |  | 19d → 9.5d |  |
| 83 | Viết tài liệu mô tả, chú ý những chỗ đặc biệt | 2012-09-29 → 2012-09-28 (-1d) | 2012-09-30 → 2012-09-29 (-1d) | 1d → 0.5d | 19d → 9.5d |  |
| 84 | **Quản lý phụ lục hợp đồng** | 2012-10-03 → 2012-09-25 (-8d) | 2012-10-20 → 2012-10-11 (-9d) | 16.98d → 15.5d | 2.02d → 0d |  |
| 85 | Tính giá trị phụ lục | 2012-10-03 → 2012-09-25 (-8d) | 2012-10-12 → 2012-09-30 (-12d) | 4d → 5d | 2.02d → 0d |  |
| 86 | Thêm | 2012-10-12 → 2012-10-02 (-10d) | 2012-10-15 → 2012-10-06 (-9d) | 3d → 4d | 2.02d → 2.5d | 85 → 74 |
| 87 | Xóa | 2012-10-15 → 2012-10-06 (-9d) | 2012-10-16 → 2012-10-07 (-9d) |  | 2.02d → 2.5d |  |
| 88 | Sửa | 2012-10-16 → 2012-10-07 (-9d) | 2012-10-18 → 2012-10-09 (-9d) |  | 2.02d → 2.5d |  |
| 89 | Tìm kiếm | 2012-10-18 → 2012-10-09 (-9d) | 2012-10-19 → 2012-10-10 (-9d) |  | 2.02d → 2.5d |  |
| 90 | Viết tài liệu mô tả, chú ý những chỗ đặc biệt | 2012-10-19 → 2012-10-10 (-9d) | 2012-10-20 → 2012-10-11 (-9d) | 1d → 0.5d | 2.02d → 2.5d |  |
| 91 | **Quản lý hồ sơ thanh toán** | 2012-09-30 → 2012-10-03 (+3d) | 2012-10-18 → 2012-10-11 (-7d) | 18d → 7.5d | 7d → 0d |  |
| 92 | Kê khai hồ sơ thanh toán | 2012-09-30 → 2012-10-03 (+3d) | 2012-10-03 → 2012-10-07 (+4d) | 3d → 4d | 19d → 5d | 83 → 75 |
| 93 | Tìm kiếm | 2012-10-03 → 2012-10-07 (+4d) | 2012-10-04 → 2012-10-08 (+4d) |  | 19d → 5d |  |
| 94 | Xóa | 2012-10-04 → 2012-10-08 (+4d) | 2012-10-05 → 2012-10-09 (+4d) |  | 19d → 5d |  |
| 95 | Sửa | 2012-10-12 → 2012-10-09 (-3d) | 2012-10-13 → 2012-10-10 (-3d) |  | 12d → 5d | 94, 75 → 94 |
| 96 | Link với web thanh toán | 2012-10-12 → 2012-10-03 (-9d) | 2012-10-17 → 2012-10-08 (-9d) |  |  |  |
| 97 | Viết tài liệu mô tả, chú ý những chỗ đặc biệt | 2012-10-17 → 2012-10-10 (-7d) | 2012-10-18 → 2012-10-11 (-7d) | 1d → 0.5d | 0d → 5d | 96 → 95 |
| 98 | **Báo cáo** | 2012-10-13 → 2012-10-08 (-5d) | 2012-11-06 → 2012-10-26 (-11d) | 24d → 18d |  |  |
| 99 | **Báo cáo tiến độ** | 2012-10-18 → 2012-10-08 (-10d) | 2012-10-25 → 2012-10-16 (-9d) | 7d → 7.5d |  |  |
| 100 | Store database | 2012-10-18 → 2012-10-08 (-10d) | 2012-10-24 → 2012-10-15 (-9d) |  |  | 97 → 96 |
| 101 | Giao diện | 2012-10-20 → 2012-10-11 (-9d) | 2012-10-22 → 2012-10-13 (-9d) |  | 2.02d → 2.5d |  |
| 102 | Viết tài liệu mô tả, chú ý những chỗ đặc biệt | 2012-10-24 → 2012-10-15 (-9d) | 2012-10-25 → 2012-10-16 (-9d) | 1d → 0.5d |  |  |

| ID | Task | Start | Finish | Duration | Total float | Predecessors |
| --- | --- | --- | --- | --- | --- | --- |
| 103 | **Xuất bảng đối soát cước** | 2012-10-13 → 2012-10-11 (-2d) | 2012-10-29 → 2012-10-19 (-10d) | 16d → 8.5d |  |  |
| 104 | Store database | 2012-10-25 → 2012-10-16 (-9d) | 2012-10-28 → 2012-10-19 (-9d) |  |  |  |
| 105 | Giao diện | 2012-10-13 → 2012-10-11 (-2d) | 2012-10-16 → 2012-10-14 (-2d) |  | 12d → 5d | 95 → 97 |
| 106 | Viết tài liệu mô tả, chú ý những chỗ đặc biệt | 2012-10-28 → 2012-10-19 (-9d) | 2012-10-29 → 2012-10-19 (-10d) | 1d → 0.5d |  |  |
| 107 | **Báo cáo giảm trừ mất liên lạc** | 2012-10-22 → 2012-10-13 (-9d) | 2012-11-02 → 2012-10-23 (-10d) | 11.02d → 10d |  |  |
| 108 | Store databse | 2012-10-29 → 2012-10-19 (-10d) | 2012-11-01 → 2012-10-22 (-10d) |  |  |  |
| 109 | Giao diện | 2012-10-22 → 2012-10-13 (-9d) | 2012-10-24 → 2012-10-15 (-9d) |  | -3.02d → 7.5d |  |
| 110 | Viết tài liệu mô tả, chú ý những chỗ đặc biệt | 2012-11-01 → 2012-10-22 (-10d) | 2012-11-02 → 2012-10-23 (-10d) | 1d → 0.5d |  |  |
| 111 | **Báo cáo sự cố theo thời gian** | 2012-10-24 → 2012-10-15 (-9d) | 2012-11-06 → 2012-10-26 (-11d) | 13.02d → 11.5d |  |  |
| 112 | Store databse | 2012-11-02 → 2012-10-23 (-10d) | 2012-11-05 → 2012-10-26 (-10d) |  |  |  |
| 113 | Giao diện | 2012-10-24 → 2012-10-15 (-9d) | 2012-11-02 → 2012-10-18 (-15d) |  | -3.02d → 8d |  |
| 114 | Viết tài liệu mô tả, chú ý những chỗ đặc biệt | 2012-11-05 → 2012-10-26 (-10d) | 2012-11-06 → 2012-10-26 (-11d) | 1d → 0.5d |  |  |
| 115 | Test và fix bug giai đoạn 2 | 2012-11-06 → 2012-10-26 (-11d) | 2012-11-11 → 2012-10-29 (-13d) | 5d → 3d |  | 114, 105 → 114 |
| 116 | Demo giai đoạn 2 | 2012-11-11 → 2012-10-29 (-13d) | 2012-11-12 → 2012-10-30 (-13d) |  |  |  |
| 117 | Test và fix bug cả hai giai đoạn trong lúc chờ ý kiến phản hồi của khách hàng | 2012-11-12 → 2012-10-30 (-13d) | 2012-11-17 → 2012-11-04 (-13d) |  |  |  |
| 118 | Viết tài liệu hướng dẫn sử dụng | 2012-11-17 → 2012-11-04 (-13d) | 2012-11-20 → 2012-11-07 (-13d) |  |  |  |

## Version 3 (saved 2012-09-15)

Last finish stays 2012-11-07.

Added:

| ID | Task | Duration | Start | Finish | Predecessors | Resources |
| --- | --- | --- | --- | --- | --- | --- |
| 36 | DB | 1d? | 2012-09-17 | 2012-09-18 |  | Long |
| 37 | Giao diện | 1d? | 2012-09-18 | 2012-09-19 | 36 | Đức |

Changed:

| ID | Task | Start | Finish | Duration | Total float | Predecessors | Other |
| --- | --- | --- | --- | --- | --- | --- | --- |
| 15 | **Code** |  |  | 61.5d → 61.5d? |  |  |  |
| 16 | **Giai đoạn 1** |  |  | 26.5d → 26.5d? |  |  |  |
| 29 | **Quản lý tuyến kênh** |  | 2012-09-25 → 2012-09-23 (-2d) | 18.5d → 16.5d? | 1d → 3d |  |  |
| 35 | **Import** |  | 2012-09-21 → 2012-09-19 (-2d) | 4d → 2d? | 1d → 3d |  | resources Long → none |
| 38 | Export | 2012-09-21 → 2012-09-19 (-2d) | 2012-09-23 → 2012-09-21 (-2d) |  | 1d → 3d | 35 → 37 |  |
| 39 | Form tìm kiếm tuyến kênh sử dụng chung | 2012-09-23 → 2012-09-21 (-2d) | 2012-09-25 → 2012-09-23 (-2d) |  | 1d → 3d |  |  |
| 40 | Viết tài liệu mô tả, chú ý những chỗ đặc biệt | 2012-09-25 → 2012-09-23 (-2d) | 2012-09-25 → 2012-09-23 (-2d) |  | 1d → 3d |  |  |
| 41 | **Quản lý tiến độ bàn giao kênh** | 2012-09-25 → 2012-09-23 (-2d) | 2012-09-29 → 2012-09-27 (-2d) |  | 1d → 3d |  |  |
| 42 | Tìm kiếm | 2012-09-25 → 2012-09-23 (-2d) | 2012-09-27 → 2012-09-25 (-2d) |  | 1d → 3d |  |  |
| 43 | Cập nhật tiến độ bàn giao kênh | 2012-09-27 → 2012-09-25 (-2d) | 2012-09-29 → 2012-09-27 (-2d) |  | 1d → 3d |  |  |
| 44 | Viết tài liệu mô tả, chú ý những chỗ đặc biệt | 2012-09-29 → 2012-09-27 (-2d) | 2012-09-29 → 2012-09-27 (-2d) |  | 1d → 3d |  |  |
| 56 | Tìm kiếm |  |  |  |  |  | resources Đức → Long |
| 57 | Thêm |  |  |  |  |  | resources Đức → Long |
| 58 | Xóa |  |  |  |  |  | resources Đức → Long |
| 59 | Sửa |  |  |  |  |  | resources Đức → Long |
| 60 | Xem chi tiết |  |  |  |  |  | resources Đức → Long |
| 61 | Viết tài liệu mô tả, chú ý những chỗ đặc biệt |  |  |  |  |  | resources Đức → Long |
